# Mill Road - Programme

Schedule from MS Project, 2020-09-01 to 2025-03-14.

## Calendars

- Standard: Mon-Fri 08:00-12:00, 13:00-17:00; Sat-Sun off.

## Schedule

| ID | WBS | Task | Duration | Start | Finish | Predecessors | Total slack | Free slack | Constraint |
| --- | --- | --- | --- | --- | --- | --- | --- | --- | --- |
| 1 | 1 | **Strategic South - Mill Road** | 1184d | 2020-09-01 | 2025-03-14 |  | 0d |  |  |
| 2 | 1.1 | **Takaanini Section** | 774d | 2020-09-01 | 2023-08-18 |  | 324d |  |  |
| 3 | 1.1.1 | Site establishment | 1mo | 2020-09-01 | 2020-09-28 |  | 324d | 0d | start no earlier than 2020-09-01 |
| 4 | 1.1.2 | Culverts | 3mo | 2020-09-29 | 2020-12-21 | 3 | 1104d |  |  |
| 5 | 1.1.3 | Bulk earthworks - season 1 | 7.6mo | 2020-10-01 | 2021-04-30 | 3 | 419d | 0d | finish no earlier than 2021-04-30 |
| 6 | 1.1.4 | Settlement period 1 | 5mo | 2021-05-14 | 2021-09-30 | 5 | 410d | 0d | finish no earlier than 2021-09-30 |
| 7 | 1.1.5 | Bulk earthworks - season 2 | 7.55mo | 2021-10-01 | 2022-04-29 | 6 | 410d | 0d | start no earlier than 2021-10-01 |
| 8 | 1.1.6 | Settlement period 2 | 5.5mo | 2022-05-02 | 2022-09-30 | 7 | 460d | 0d | start no earlier than 2022-05-02 |
| 9 | 1.1.7 | Bulk earthworks - season 3 | 3mo | 2022-10-03 | 2022-12-23 | 8 | 460d | 50d |  |
| 10 | 1.1.8 | Bridge construction | 6mo | 2021-05-03 | 2021-10-15 | 5 | 790d | 380d |  |
| 11 | 1.1.9 | Drainage works | 6mo | 2022-05-02 | 2022-10-14 | 7 | 410d | 0d |  |
| 12 | 1.1.10 | Pavement construction | 9mo | 2022-07-25 | 2023-03-31 | 11SS+3mo, 9FF+1mo | 410d | 0d |  |
| 13 | 1.1.11 | Finishing works, landscaping, demobilisation | 5mo | 2023-04-03 | 2023-08-18 | 12, 10, 11 | 410d |  |  |
| 14 | 1.2 | **Papakura Section** | 740d | 2021-02-16 | 2023-12-18 |  | 324d |  |  |
| 15 | 1.2.1 | Site establishment | 1mo | 2021-02-16 | 2021-03-15 | 3SS+6mo | 324d | 0d |  |
| 16 | 1.2.2 | Culverts | 3mo | 2021-03-16 | 2021-06-07 | 15 | 984d |  |  |
| 17 | 1.2.3 | Stage 1 Pavement Widening | 9mo | 2021-03-16 | 2021-11-22 | 15 | 324d | 0d |  |
| 18 | 1.2.4 | Stage 2 Pavement Widening | 12mo | 2021-11-23 | 2022-10-24 | 17 | 324d | 0d |  |
| 19 | 1.2.5 | Stage 3 Pavement Finishing Works and intersections | 6mo | 2022-10-25 | 2023-04-10 | 18 | 324d | 0d |  |
| 20 | 1.2.6 | Drainage works | 6mo | 2023-01-17 | 2023-07-03 | 18, 19FF+3mo | 324d | 0d |  |
| 21 | 1.2.7 | Finishing works, landscaping, demobilisation | 6mo | 2023-07-04 | 2023-12-18 | 20 | 324d |  |  |
| 22 | 1.3 | **Drury Section** | 923d | 2021-09-01 | 2025-03-14 |  | 0d |  |  |
| 23 | 1.3.1 | Site establishment | 1mo | 2021-09-01 | 2021-09-28 |  | 12d | 0d | start no earlier than 2021-09-01 |
| 24 | 1.3.2 | Culverts | 12mo | 2021-09-29 | 2022-08-30 | 23 | 663d |  |  |
| 25 | 1.3.3 | Bulk earthworks - season 1 | 7.55mo | 2021-10-01 | 2022-04-29 | 23 | 10d |  | finish no earlier than 2022-04-29 |
| 26 | 1.3.4 | Settlement period 1 | 5mo | 2022-05-16 | 2022-09-30 | 25 | 0d |  | finish no earlier than 2022-09-30 |
| 27 | 1.3.5 | Bulk earthworks - season 2 | 7.5mo | 2022-10-03 | 2023-04-28 | 26 | 0d |  | start no earlier than 2022-10-03 |
| 28 | 1.3.6 | Settlement period 2 | 5.5mo | 2023-05-01 | 2023-09-29 | 27 | 0d |  | start no earlier than 2023-05-01 |
| 29 | 1.3.7 | Bulk earthworks - season 3 | 7mo | 2023-10-02 | 2024-04-12 | 28 | 160d | 0d |  |
| 30 | 1.3.8 | Settlement period 3 | 3mo | 2024-04-15 | 2024-07-05 | 29 | 160d | 0d |  |
| 31 | 1.3.9 | Bridge construction | 27mo | 2021-09-29 | 2023-10-24 | 23 | 363d |  |  |
| 32 | 1.3.10 | Drainage works | 9mo | 2023-11-27 | 2024-08-02 | 27, 30FF+1mo | 160d |  |  |
| 33 | 1.3.11 | Pavement construction | 13mo | 2023-10-02 | 2024-09-27 | 28 | 0d |  |  |
| 34 | 1.3.12 | Finishing works, landscaping, demobilisation | 6mo | 2024-09-30 | 2025-03-14 | 33 | 0d |  |  |
