# 2020_03_18_Link Road AWT Hahei Preliminary Tender Programme

Schedule from MS Project, 2020-05-08 to 2020-08-20, status date 2020-05-07.

## Calendars

- Standard: Mon-Fri 08:00-12:00, 13:00-17:00; Sat-Sun off. Exceptions (off unless hours are given): 2020-06-01 (Queens Birthday).

## Schedule

| ID | WBS | Task | Type | Duration | Start | Finish | Predecessors | Total slack | Free slack | Constraint |
| --- | --- | --- | --- | --- | --- | --- | --- | --- | --- | --- |
| 1 | 1 | **Drury South Road-Simplified Programme** |  | 74d | 2020-05-08 | 2020-08-20 |  | 0d |  |  |
| 2 | 1.1 | **Milestone** |  | 37d | 2020-05-08 | 2020-06-30 |  | 0d |  |  |
| 3 | 1.1.1 | Balance Work Start Date | milestone | 0d | 2020-05-08 | 2020-05-08 |  | 0d |  |  |
| 4 | 1.1.2 | Gas Connection and decomissioning | milestone | 0d | 2020-06-16 | 2020-06-16 |  | 47d | 0d | finish no earlier than 2020-06-16 |
| 5 | 1.1.3 | Streetlight Luminare | milestone | 0d | 2020-06-30 | 2020-06-30 |  | 15d | 0d | finish no earlier than 2020-06-30 |
| 6 | 1.2 | **Road 2W ( CH80 to CH 400- Western Side of Ramarama)** |  | 53d | 2020-05-08 | 2020-07-22 |  | 0d |  |  |
| 7 | 1.2.1 | 250mm cement bound Subbase(Midblock) |  | 4d | 2020-05-08 | 2020-05-13 | 3 | 0d |  |  |
| 8 | 1.2.2 | Kerbing and Channel |  | 4d | 2020-05-28 | 2020-06-03 | 7FS+10d | 21d | 0d |  |
| 9 | 1.2.3 | Traffic Islands |  | 2d | 2020-05-28 | 2020-05-29 | 8SS, 7 | 40d | 2d |  |
| 10 | 1.2.4 | 230mm cement modified basecourse ( Midblock) |  | 2d | 2020-06-04 | 2020-06-05 | 8, 9 | 38d | 0d |  |
| 11 | 1.2.5 | Water Mains |  | 14d | 2020-05-08 | 2020-05-27 | 3 | 41d | 0d |  |
| 12 | 1.2.6 | Utilities |  | 3d | 2020-05-08 | 2020-05-12 | 3 | 41d | 0d |  |
| 13 | 1.2.7 | Concreting (Footpath, Pram crossing,Tactiles) |  | 15d | 2020-05-13 | 2020-06-03 | 12, 11SS+3d | 41d | 0d |  |
| 14 | 1.2.8 | Asphalt/Chip Seal Surfacing |  | 4d | 2020-06-15 | 2020-06-18 | 10FS+5d | 38d | 8d |  |
| 15 | 1.2.9 | Line marking/Signage |  | 10d | 2020-06-04 | 2020-06-17 | 13 | 41d | 20d |  |
| 16 | 1.2.10 | Treepits/Swales/Topsoiling |  | 30d | 2020-06-04 | 2020-07-15 | 8 | 21d | 0d |  |
| 17 | 1.2.11 | Street Lights |  | 2d | 2020-07-01 | 2020-07-02 | 5, 12, 14 | 30d | 9d |  |
| 18 | 1.2.12 | Site Cleaning/Documentation and Final QA submission |  | 5d | 2020-07-16 | 2020-07-22 | 16, 15, 17 | 21d |  |  |
| 19 | 1.3 | **Road 1** |  | 56d | 2020-05-08 | 2020-07-27 |  | 15d |  |  |
| 20 | 1.3.1 | 250mm cement bound subbase (Mid Block) |  | 2d | 2020-05-29 | 2020-06-02 | 7FS+11d | 0d |  |  |
| 21 | 1.3.2 | Kerbing and Channel |  | 2d | 2020-06-11 | 2020-06-12 | 20FS+6d | 18d | 0d |  |
| 22 | 1.3.3 | 230mm cement modified basecourse ( Midblock) |  | 3d | 2020-06-15 | 2020-06-17 | 21 | 26d | 0d |  |
| 23 | 1.3.4 | Water Mains |  | 28d | 2020-05-08 | 2020-06-17 | 3 | 38d | 0d |  |
| 24 | 1.3.5 | Utilities |  | 5d | 2020-05-08 | 2020-05-14 | 23SS, 3 | 38d | 20d |  |
| 25 | 1.3.6 | Concreting (Footpath, Pram crossing,Tactiles) |  | 15d | 2020-06-15 | 2020-07-03 | 21, 24 | 18d | 0d |  |
| 26 | 1.3.7 | Asphalt/Chip Seal Surfacing |  | 6d | 2020-06-25 | 2020-07-02 | 22FS+5d | 26d | 0d |  |
| 27 | 1.3.8 | Line marking/Signage |  | 4d | 2020-07-03 | 2020-07-08 | 26 | 26d | 8d |  |
| 28 | 1.3.9 | Treepits/Swales/Topsoiling |  | 11d | 2020-07-06 | 2020-07-20 | 25 | 18d | 0d |  |
| 29 | 1.3.10 | Street Lights |  | 2d | 2020-07-01 | 2020-07-02 | 5 | 30d | 12d |  |
| 30 | 1.3.11 | Site Cleaning/Documentation and Final QA submission |  | 5d | 2020-07-21 | 2020-07-27 | 27, 28, 29 | 18d |  |  |

| ID | WBS | Task | Duration | Start | Finish | Predecessors | Total slack | Free slack | Deadline |
| --- | --- | --- | --- | --- | --- | --- | --- | --- | --- |
| 31 | 1.4 | **Spine Road and Bridge** | 50d | 2020-05-08 | 2020-07-17 |  | 24d |  |  |
| 32 | 1.4.1 | Waste water Drainage | 12d | 2020-05-08 | 2020-05-25 | 3 | 30d | 6d |  |
| 33 | 1.4.2 | Water Mains | 23d | 2020-05-08 | 2020-06-10 | 3 | 24d | 0d |  |
| 34 | 1.4.3 | Utilities | 5d | 2020-05-27 | 2020-06-03 | 33SS+13d | 24d | 0d |  |
| 35 | 1.4.4 | Concrete Footpaths | 9d | 2020-06-04 | 2020-06-16 | 34 | 47d |  |  |
| 36 | 1.4.5 | Removal of Temp Haul Road | 1d | 2020-06-04 | 2020-06-04 | 34, 32, 33FS-7d | 24d | 0d |  |
| 37 | 1.4.6 | 250mm cement bound subbase | 2d | 2020-06-05 | 2020-06-08 | 36 | 24d | 0d |  |
| 38 | 1.4.7 | Kerbing and Channel | 1d | 2020-06-16 | 2020-06-16 | 37FS+5d | 24d | 0d |  |
| 39 | 1.4.8 | Topsoil berms | 2d | 2020-06-17 | 2020-06-18 | 34, 38 | 40d | 16d |  |
| 40 | 1.4.9 | 185mm Asphalt (HF, PMB Chipseal, AC20, AC14) | 3d | 2020-06-17 | 2020-06-19 | 38 | 24d | 0d |  |
| 41 | 1.4.10 | **Bridge Surfacing** | 3d | 2020-06-17 | 2020-06-19 |  | 24d |  |  |
| 42 | 1.4.10.1 | Bond coat | 1d | 2020-06-17 | 2020-06-17 | 40SS | 24d | 0d |  |
| 43 | 1.4.10.2 | DG7 (PMB) Levelling Course | 1d | 2020-06-18 | 2020-06-18 | 42 | 24d | 0d |  |
| 44 | 1.4.10.3 | 40mm AC14 surfacing | 1d | 2020-06-19 | 2020-06-19 | 43 | 24d | 0d |  |
| 45 | 1.4.11 | TL4 Barrier Installation | 6d | 2020-07-03 | 2020-07-10 | 44FS+9d | 24d | 0d |  |
| 46 | 1.4.12 | Line marking | 1d | 2020-06-22 | 2020-06-22 | 40, 44 | 38d | 14d |  |
| 47 | 1.4.13 | Site Cleaning/Documentation and Final QA submission | 5d | 2020-07-13 | 2020-07-17 | 46, 45, 39 | 24d |  |  |
| 48 | 1.5 | **I2 Intersection** | 60d | 2020-05-08 | 2020-07-31 |  | 0d |  |  |
| 49 | 1.5.1 | Water Mains | 26d | 2020-05-08 | 2020-06-15 | 3 | 9d | 0d |  |
| 50 | 1.5.2 | Utilities | 5d | 2020-05-08 | 2020-05-14 | 3 | 16d | 5d |  |
| 51 | 1.5.3 | Removal of Temp Haul Road (I2) | 2d | 2020-05-15 | 2020-05-18 | 49SS+5d, 50SS | 11d |  |  |
| 52 | 1.5.4 | - | 3d | 2020-06-04 | 2020-06-08 | 51, 20FS+1d | 0d |  |  |
| 53 | 1.5.5 | Kerbing and Channel | 7d | 2020-06-09 | 2020-06-17 | 52 | 0d |  |  |
| 54 | 1.5.6 | Traffic Islands | 5d | 2020-06-09 | 2020-06-15 | 53SS | 2d |  |  |
| 55 | 1.5.7 | 205mm Asphalt (HF, PMB Chipseal, AC20, AC14) | 2d | 2020-06-18 | 2020-06-19 | 53, 54 | 0d |  |  |
| 56 | 1.5.8 | Traffic Signals | 5d | 2020-06-22 | 2020-06-26 | 53, 55 | 0d |  |  |
| 57 | 1.5.9 | Concrete Footpaths | 10d | 2020-06-29 | 2020-07-10 | 49, 50, 56 | 0d |  |  |
| 58 | 1.5.10 | Line marking/Signage | 4d | 2020-06-22 | 2020-06-25 | 55 | 18d | 3d |  |
| 59 | 1.5.11 | Treepits/Swales/Topsoiling | 10d | 2020-07-13 | 2020-07-24 | 57 | 0d |  |  |
| 60 | 1.5.12 | Street Lights | 3d | 2020-07-01 | 2020-07-03 | 58, 5 | 15d |  |  |
| 61 | 1.5.13 | Site Cleaning/Documentation and Final QA submission | 5d | 2020-07-27 | 2020-07-31 | 59, 60 | 0d |  | 2020-07-31 |

| ID | WBS | Task | Duration | Start | Finish | Predecessors | Total slack | Free slack | Deadline |
| --- | --- | --- | --- | --- | --- | --- | --- | --- | --- |
| 62 | 1.6 | **Road 1A** | 62d | 2020-05-08 | 2020-08-04 |  | 0d |  |  |
| 63 | 1.6.1 | Water Mains | 26d | 2020-05-08 | 2020-06-15 | 3 | 0d |  |  |
| 64 | 1.6.2 | Utilities | 5d | 2020-05-08 | 2020-05-14 | 3 | 21d |  |  |
| 65 | 1.6.3 | Removal of Temp Haul Road (Midblock) | 2d | 2020-06-16 | 2020-06-17 | 63, 64 | 7d | 0d |  |
| 66 | 1.6.4 | 250mm cement bound Subbase(Midblock) | 3d | 2020-06-18 | 2020-06-22 | 65 | 7d | 0d |  |
| 67 | 1.6.5 | Kerbing and Channel | 7d | 2020-06-23 | 2020-07-01 | 66 | 7d | 0d |  |
| 68 | 1.6.6 | 230mm cement modified basecourse ( Midblock) | 3d | 2020-07-02 | 2020-07-06 | 67 | 7d | 0d |  |
| 69 | 1.6.7 | Asphalt/Chip Seal Surfacing | 2d | 2020-07-07 | 2020-07-08 | 68 | 7d | 0d |  |
| 70 | 1.6.8 | Concreting | 10d | 2020-06-16 | 2020-06-29 | 63, 64 | 0d |  |  |
| 71 | 1.6.9 | Line marking/Signage | 3d | 2020-07-09 | 2020-07-13 | 69 | 7d | 0d |  |
| 72 | 1.6.10 | Treepits/Swales | 20d | 2020-06-30 | 2020-07-27 | 70 | 0d |  |  |
| 73 | 1.6.11 | Street Lights | 3d | 2020-07-14 | 2020-07-16 | 5, 71 | 7d |  |  |
| 74 | 1.6.12 | Site Cleaning/Documentation and Final QA submission | 6d | 2020-07-28 | 2020-08-04 | 72, 73 | 0d |  | 2020-08-04 |
| 75 | 1.7 | **Road 2W Chicane (VO - Additional Scope)** | 74d | 2020-05-08 | 2020-08-20 |  | 0d |  |  |
| 76 | 1.7.1 | Temp road widening/berm fill - SML (Eastern Side) | 2d | 2020-05-08 | 2020-05-11 | 3 | 25d |  |  |
| 77 | 1.7.2 | Gas line decommissioned | 1d | 2020-06-17 | 2020-06-17 | 4SS | 0d |  |  |
| 78 | 1.7.3 | Traffic diverted to temp road | 1d | 2020-06-17 | 2020-06-17 | 76, 77SS | 0d |  |  |
| 79 | 1.7.4 | WWMH 1.A-19 to WWMH 1.A-20 (300dia)& temp cover | 3d | 2020-06-17 | 2020-06-19 | 78SS | 0d |  |  |
| 80 | 1.7.5 | WWMH 1.A-20 to WWMH 1.A-21 (300dia) | 1d | 2020-06-22 | 2020-06-22 | 79 | 0d |  |  |
| 81 | 1.7.6 | WWMH 1.A19 to WWSC 1.A.6 (225dia) | 2d | 2020-06-23 | 2020-06-24 | 80 | 0d |  |  |
| 82 | 1.7.7 | SWMH 1.1-K to SWMH 1.1-L (1800dia) - 27.5m approx. | 5d | 2020-06-25 | 2020-07-01 | 81 | 0d |  |  |
| 83 | 1.7.8 | SWMH 1.1-K to SWSC 1.301-A (300dia) - LOT65 | 2d | 2020-07-02 | 2020-07-03 | 82 | 0d |  |  |
| 84 | 1.7.9 | 180Ø watermain (WSFH 2W-8 to Temp Rd Interface) | 3d | 2020-07-06 | 2020-07-08 | 83 | 0d |  |  |
| 85 | 1.7.10 | 180Ø watermain (WSFH 2W-7 to WSFH 2W-9)& temp cover | 5d | 2020-07-09 | 2020-07-15 | 84 | 0d |  |  |
| 86 | 1.7.11 | Pressure Test / WC Ispection | 1d | 2020-07-16 | 2020-07-16 | 85 | 23d |  |  |
| 87 | 1.7.12 | Excavate, bed& backfill trench & Detail C ducts (south berm) | 2d | 2020-07-16 | 2020-07-17 | 85 | 0d |  |  |
| 88 | 1.7.13 | Excavate, bed& backfill trench & Detail C ducts (north berm) | 2d | 2020-07-20 | 2020-07-21 | 87 | 0d |  |  |
| 89 | 1.7.14 | Bulk cut swale& install swale subsoil drains (south berm) | 2d | 2020-07-20 | 2020-07-21 | 88SS | 0d |  |  |
| 90 | 1.7.15 | Bulk cut swale& install swale subsoil drains (north berm) | 2d | 2020-07-22 | 2020-07-23 | 89 | 0d |  |  |
| 91 | 1.7.16 | Trim sub-grade& dispose of surplus | 2d | 2020-07-24 | 2020-07-27 | 90 | 0d |  |  |
| 92 | 1.7.17 | 300mm GAP65 SIL | 2d | 2020-07-28 | 2020-07-29 | 91 | 0d |  |  |
| 93 | 1.7.18 | 250mm cement bound subbase | 1d | 2020-07-30 | 2020-07-30 | 92 | 0d |  |  |
| 94 | 1.7.19 | Install kerbs (edge beam) | 2d | 2020-07-31 | 2020-08-03 | 93 | 0d |  |  |
| 95 | 1.7.20 | Asphalt/Chip Seal Surfacing | 4d | 2020-08-11 | 2020-08-14 | 94FS+5d | 0d |  |  |
| 96 | 1.7.21 | Line marking/Signage | 2d | 2020-08-17 | 2020-08-18 | 95 | 0d |  |  |
| 97 | 1.7.22 | Site Cleaning/Documentation and Final QA submission | 2d | 2020-08-19 | 2020-08-20 | 96, 86 | 0d |  |  |
| 98 | 1.8 | Wet Weather | 20d | 2020-07-24 | 2020-08-20 | 30FS-20d, 47FS-20d, 61FS-20d, 74FS-20d, 97FS-20d, 18FS-20d | 0d |  |  |
